ID,Task Name,Start,Finish
3,Pier No. P2,2025-01-25,2026-02-10
4,Pier Table P2A completed,2025-01-25,2025-01-25
8,Installation of Tower Crane,2025-01-27,2025-03-27
11,Assembly and Installation of Form Traveler,2025-02-04,2025-03-21
12,Pylon P2A,2025-04-30,2025-07-30
13,Kicker,2025-04-30,2025-05-07
14,1st Portion,2025-05-08,2025-05-16
24,Segment A',2025-03-28,2025-04-11
388,Segment A,2025-03-29,2025-04-12
735,Segment T(Mid span closure),2026-01-27,2026-02-10
748,Pier No. P3,2025-03-22,2026-02-16
1023,Segment A1,2025-05-24,2025-06-07
1219,Segment L1,2026-01-12,2026-01-24
1003,Segment M1'(End span closure-Final),2026-01-01,2026-02-16
